# PlanningValidation

Schedule from MS Project, 2013-03-04 to 2013-06-30, A marks actual dates.

## Calendars

- Standard[Imported]: Mon-Fri 08:00-12:00, 13:00-17:00; Sat-Sun off.

## Resources

| Resource | Group |
| --- | --- |
| Non affecté |  |
| Andrei | Validation |
| Anton | Validation |
| Olga | Validation |
| Valid-FLO |  |
| TestBench |  |

## Schedule

| ID | WBS | Task | Type | Duration | Start | Finish | Complete | Remaining | Baseline start | Baseline finish | Baseline duration | Total slack | Free slack | Constraint | Resources | Work | Actual work |
| --- | --- | --- | --- | --- | --- | --- | --- | --- | --- | --- | --- | --- | --- | --- | --- | --- | --- |
| 1 | 1 | **STR3** |  | 25d | 2013-03-11 A | 2013-04-12 | 42% | 14.51d | 2013-03-11 | 2013-04-04 | 19d | 54d |  |  |  | 424h | 183.5h |
| 2 | 1.1 | VTD - Control and Monitor the Batteries Charge |  | 1d | 2013-03-28 | 2013-03-28 |  |  | 2013-03-29 | 2013-03-29 | 1d | 65d | 12d | start no earlier than 2013-03-28 | Anton | 8h |  |
| 3 | 1.2 | VTD - Control of microclimate system |  | 3d | 2013-03-11 A | 2013-03-13 A | 100% |  | 2013-03-11 | 2013-03-13 | 3d |  |  |  | Andrei | 24h | 24h |
| 4 | 1.3 | VTD - Parking mode in activate state |  | 5d | 2013-03-22 A | 2013-03-27 | 50% | 2.5d | 2013-03-22 | 2013-03-25 | 3d | 65d | 0d |  | Andrei | 40h | 20h |
| 5 | 1.4 | VTD - Manage km-meter and operating times |  | 1d | 2013-04-04 | 2013-04-04 |  |  | 2013-03-19 | 2013-03-19 | 1d | 60d | 8d | start no earlier than 2013-04-04 | Andrei | 8h |  |
| 6 | 1.5 | VTD - Machine Room Ventilation System |  | 1d | 2013-03-20 A | 2013-03-20 A | 100% |  | 2013-03-20 | 2013-03-20 | 1d |  |  |  | Andrei | 8h | 8h |
| 7 | 1.6 | VTD - Sanding System Management |  | 3d | 2013-03-14 A | 2013-03-18 | 50% | 1.5d | 2013-03-14 | 2013-03-18 | 3d | 73d | 19d |  | Andrei | 24h | 12h |
| 8 | 1.7 | VTD - Antislide Protection System (WSP) |  | 4.5d | 2013-03-23 A | 2013-03-28 | 75% | 1.12d | 2013-03-23 | 2013-03-26 | 3d | 65.5d | 7.5d |  | Olga [50%] | 24h | 19.5h |
| 9 | 1.8 | VTD - Brake Substitution Control |  | 3d | 2013-04-08 | 2013-04-10 |  |  | 2013-04-02 | 2013-04-04 | 3d | 55d | 12d | start no earlier than 2013-04-08 | Andrei | 24h |  |
| 10 | 1.9 | VTD - Management of auxiliary loads contactors |  | 3d | 2013-03-18 A | 2013-03-20 | 75% | 0.75d | 2013-03-18 | 2013-03-20 | 3d | 70d | 22d |  | Olga | 24h | 18h |
| 11 | 1.10 | VTD - Detect and report a fire and fire extinction |  | 1d | 2013-03-25 A | 2013-03-25 A | 100% |  | 2013-03-25 | 2013-03-25 | 1d |  |  | start no earlier than 2013-03-25 | Anton | 8h | 8h |
| 12 | 1.11 | VTD - Axle-box bearings temperature control |  | 2d | 2013-03-29 A | 2013-03-30 | 50% | 1d | 2013-03-27 | 2013-03-27 | 1d | 64d | 5d | start no earlier than 2013-03-29 | Olga [50%] | 8h | 4h |
| 13 | 1.12 | VTD - Bring Train into Service. Part 2 - Selection of active section (cab) |  | 3d | 2013-03-28 A | 2013-03-30 | 50% | 1.5d | 2013-03-26 | 2013-03-28 | 3d | 63d | 2d | start no earlier than 2013-03-28 | Andrei | 24h | 12h |
| 14 | 1.13 | VTD - Develop Driving Orders | manual | 4d | 2013-03-13 A | 2013-03-18 | 50% | 2d | 2013-03-13 | 2013-03-18 | 4d |  |  | start no earlier than 2013-03-13 | Anton | 32h | 16h |
| 15 | 1.14 | VTD - Provision and Management of 110 V Supply |  | 2.86d | 2013-04-08 | 2013-04-10 |  |  | 2013-03-30 | 2013-04-01 | 2d | 55.14d | 5.14d | start no earlier than 2013-04-08 | Olga [70%] | 16h |  |
| 16 | 1.15 | VTD - Indicate Locomotive Presence (Acoustic Way) |  | 1d | 2013-03-26 A | 2013-03-26 A | 100% |  | 2013-03-28 | 2013-03-28 | 1d |  |  | start no earlier than 2013-03-26 | Anton | 8h | 8h |
| 17 | 1.16 | VTD - Measure and Indicate the Train Speed |  | 1d | 2013-03-23 A | 2013-03-23 | 75% | 0.25d | 2013-03-23 | 2013-03-23 | 1d | 69d | 38d |  | Anton | 8h | 6h |
| 18 | 1.17 | VTD - Parking brake control |  | 4.29d | 2013-04-04 | 2013-04-10 |  |  | 2013-04-02 | 2013-04-04 | 3d | 55.71d | 5.71d | start no earlier than 2013-04-04 | Anton [70%] | 24h |  |
| 19 | 1.18 | VTD - Compressed Air Production |  | 2d | 2013-04-02 | 2013-04-03 |  |  | 2013-03-30 | 2013-04-01 | 2d | 60d | 21d | start no earlier than 2013-04-02 | Anton | 16h |  |
| 20 | 1.19 | VTD - Manage the high voltage configuration (Desk control) |  | 1d | 2013-03-19 A | 2013-03-19 | 75% | 0.25d | 2013-03-19 | 2013-03-19 | 1d | 72d | 35d |  | Anton | 8h | 6h |
| 21 | 1.20 | VTD - Compressed Air Distribution |  | 2d | 2013-04-02 | 2013-04-03 |  |  | 2013-03-30 | 2013-04-01 | 2d | 60d | 12d | start no earlier than 2013-04-02 | Andrei | 16h |  |
| 22 | 1.21 | VTD - Control the circuit breaker (Desk control) |  | 1d | 2013-03-27 A | 2013-03-27 | 75% | 0.25d | 2013-03-26 | 2013-03-26 | 1d | 66d | 33d | start no earlier than 2013-03-27 | Anton | 8h | 6h |
| 23 | 1.22 | VTD - Manage the pantographs (Desk control) |  | 1.43d | 2013-03-29 | 2013-03-30 |  |  | 2013-03-27 | 2013-03-27 | 1d | 63.57d | 32d | start no earlier than 2013-03-29 | Anton [70%] | 8h |  |
| 24 | 1.23 | VTD - Grounding of the locomotive |  | 1d | 2013-04-01 | 2013-04-01 |  |  | 2013-03-29 | 2013-03-29 | 1d | 63d | 27d | start no earlier than 2013-04-01 | Andrei | 8h |  |
| 25 | 1.24 | VTD - Pneumatic brake control |  | 2d | 2013-04-11 | 2013-04-12 |  |  | 2013-04-02 | 2013-04-03 | 2d | 52d | 7d | start no earlier than 2013-04-11 | Andrei | 16h |  |
| 26 | 1.25 | VTD - Tape operating data |  | 1d | 2013-03-15 A | 2013-03-15 A | 100% |  | 2013-03-15 | 2013-03-15 | 1d |  |  |  | Olga | 8h | 8h |
| 27 | 1.26 | VTD - Broadcast the time |  | 1d | 2013-04-01 | 2013-04-01 |  |  | 2013-03-29 | 2013-03-29 | 1d | 63d | 25d | start no earlier than 2013-04-01 | Anton | 8h |  |
| 28 | 1.27 | VTD - Generate Sounds |  | 1d | 2013-04-05 | 2013-04-05 |  |  | 2013-03-28 | 2013-03-28 | 1d | 59d | 24d | start no earlier than 2013-04-05 | Andrei | 8h |  |
| 29 | 1.28 | VTD - Administrate locomotive topology (HMI Part) |  | 1d | 2013-03-20 A | 2013-03-20 A | 100% |  | 2013-03-20 | 2013-03-20 | 1d |  |  |  | Anton | 8h | 8h |

Notes:
- 3: Verified - Ready to run - OK with Francois for Version A2.
- 6: Verified OK.
- 7: FDD A4 - Ok
- 11: Verified OK, for ed. A0.
- 13: FDD E1 - 15/03/2013
- 14: Complete Update required. / FDD C5 to be taken into account. / DDU displays to be checked.
- 16: Verified OK.
- 26: Verified OK.
- 29: Verified OK.

| ID | WBS | Task | Type | Duration | Start | Finish | Predecessors | Baseline start | Baseline finish | Baseline duration | Total slack | Constraint | Deadline | Resources | Work |
| --- | --- | --- | --- | --- | --- | --- | --- | --- | --- | --- | --- | --- | --- | --- | --- |
| 30 | 2 | **STR3 Validation** |  | 40d | 2013-03-26 | 2013-05-20 |  |  |  |  | 24d |  |  |  | 316h |
| 31 | 2.1 | STR3 - RUN - Control and Monitor the Batteries Charge |  | 1d | 2013-04-02 | 2013-04-02 | 59, 2 | 2013-04-26 | 2013-04-26 | 1d | 63d | start no earlier than 2013-04-02 |  | Valid-FLO | 8h |
| 32 | 2.2 | STR3 - RUN - Control of microclimate system |  | 0.5d | 2013-03-26 | 2013-03-26 | 59, 3 | 2013-03-25 | 2013-03-25 | 0.5d | 68.5d | start no earlier than 2013-03-26 |  | Valid-FLO | 4h |
| 33 | 2.3 | STR3 - RUN - Parking mode in activate state |  | 2d | 2013-03-28 | 2013-03-29 | 4 | 2013-03-28 | 2013-03-29 | 2d | 65d |  |  | Valid-FLO | 16h |
| 34 | 2.4 | STR3 - RUN - Manage km-meter and operating times |  | 1d | 2013-04-17 | 2013-04-17 | 59, 5 | 2013-03-30 | 2013-03-30 | 1d | 52d | start no earlier than 2013-04-17 |  | Valid-FLO | 8h |
| 35 | 2.5 | STR3 - RUN - Machine Room Ventilation System |  | 1d | 2013-03-27 | 2013-03-27 | 59, 6 | 2013-03-26 | 2013-03-26 | 1d | 67d | start no earlier than 2013-03-27 |  | Valid-FLO | 8h |
| 36 | 2.6 | STR3 - RUN - Sanding System Management |  | 1d | 2013-04-01 | 2013-04-01 | 59, 7 | 2013-03-27 | 2013-03-27 | 1d | 64d | start no earlier than 2013-04-01 |  | Valid-FLO | 8h |
| 37 | 2.7 | STR3 - RUN - Antislide Protection System (WSP) |  | 1d | 2013-04-09 | 2013-04-09 | 59, 8 | 2013-04-01 | 2013-04-01 | 1d | 58d | start no earlier than 2013-04-09 |  | Valid-FLO | 8h |
| 38 | 2.8 | STR3 - RUN - Brake Substitution Control | manual | 2d | 2013-04-29 | 2013-04-30 | 9, 61 | 2013-04-29 | 2013-04-30 | 2d |  |  |  | Valid-FLO | 16h |
| 39 | 2.9 | STR3 - RUN - Management of auxiliary loads contactors |  | 2d | 2013-04-22 | 2013-04-23 | 10, 61 | 2013-04-05 | 2013-04-08 | 2d | 48d |  |  | Valid-FLO | 16h |
| 40 | 2.10 | STR3 - RUN - Detect and report a fire and fire extinction |  | 1d | 2013-04-05 | 2013-04-05 | 59, 11 | 2013-04-02 | 2013-04-02 | 1d | 60d | start no earlier than 2013-04-05 |  | Valid-FLO | 8h |
| 41 | 2.11 | STR3 - RUN - Axle-box bearings temperature control |  | 1d | 2013-04-08 | 2013-04-08 | 60, 12 | 2013-04-09 | 2013-04-09 | 1d | 59d | start no earlier than 2013-04-08 |  | Valid-FLO | 8h |
| 42 | 2.12 | STR3 - RUN - Bring Train into Service. Part 2 - Selection of active section (cab) |  | 2d | 2013-04-03 | 2013-04-04 | 13, 60 | 2013-04-03 | 2013-04-04 | 2d | 61d | start no earlier than 2013-04-03 |  | Valid-FLO | 16h |
| 43 | 2.13 | STR3 - RUN - Pneumatic brake control |  | 3d | 2013-04-24 | 2013-04-26 | 25, 61 | 2013-04-10 | 2013-04-12 | 3d | 45d | start no earlier than 2013-04-24 |  | Valid-FLO | 24h |
| 44 | 2.14 | STR2 - RUN - Develop Driving Orders |  | 3d | 2013-04-10 | 2013-04-12 | 14, 59 | 2013-03-30 | 2013-04-02 | 3d | 55d | start no earlier than 2013-04-10 |  | Valid-FLO | 24h |
| 45 | 2.15 | STR2 - RUN - Provision and Management of 110 V Supply |  | 2d | 2013-04-18 | 2013-04-19 | 15, 60 | 2013-04-19 | 2013-04-22 | 2d | 50d | start no earlier than 2013-04-18 |  | Valid-FLO | 16h |
| 46 | 2.16 | STR2 - RUN - Indicate Locomotive Presence (Acoustic Way) |  | 1d | 2013-05-13 | 2013-05-13 | 16, 60 | 2013-04-23 | 2013-04-23 | 1d | 34d | start no earlier than 2013-05-13 |  | Valid-FLO | 8h |
| 47 | 2.17 | STR2 - RUN - Measure and Indicate the Train Speed |  | 1d | 2013-05-16 | 2013-05-16 | 17, 60 | 2013-04-08 | 2013-04-08 | 1d | 31d | start no earlier than 2013-05-16 |  | Valid-FLO | 8h |
| 48 | 2.18 | STR2 - RUN - Parking brake control |  | 2d | 2013-04-15 | 2013-04-16 | 18, 60 | 2013-04-24 | 2013-04-25 | 2d | 53d | start no earlier than 2013-04-15 |  | Valid-FLO | 16h |
| 49 | 2.19 | STR2 - RUN - Compressed Air Production |  | 2d | 2013-05-03 | 2013-05-06 | 19, 60 | 2013-04-17 | 2013-04-18 | 2d | 39d | start no earlier than 2013-05-03 |  | Valid-FLO | 16h |
| 50 | 2.20 | STR2 - RUN - Manage the high voltage configuration (Desk control) |  | 1d | 2013-05-08 | 2013-05-08 | 20, 60 | 2013-04-23 | 2013-04-23 | 1d | 37d | start no earlier than 2013-05-08 |  | Valid-FLO | 8h |
| 51 | 2.21 | STR2 - RUN - Compressed Air Distribution |  | 2d | 2013-05-01 | 2013-05-02 | 21, 60 | 2013-04-19 | 2013-04-22 | 2d | 41d | start no earlier than 2013-05-01 |  | Valid-FLO | 16h |
| 52 | 2.22 | STR2 - RUN - Control the circuit breaker (Desk control) |  | 1d | 2013-05-14 | 2013-05-14 | 22, 60 | 2013-04-24 | 2013-04-24 | 1d | 33d | start no earlier than 2013-05-14 |  | Valid-FLO | 8h |
| 53 | 2.23 | STR2 - RUN - Manage the pantographs (Desk control) |  | 1d | 2013-05-15 | 2013-05-15 | 23, 60 | 2013-04-25 | 2013-04-25 | 1d | 32d | start no earlier than 2013-05-15 |  | Valid-FLO | 8h |
| 54 | 2.24 | STR2 - RUN - Grounding of the locomotive |  | 1d | 2013-05-09 | 2013-05-09 | 24, 60 | 2013-04-16 | 2013-04-16 | 1d | 36d | start no earlier than 2013-05-09 |  | Valid-FLO | 8h |
| 55 | 2.25 | STR2 - RUN - Tape operating data |  | 1d | 2013-05-20 | 2013-05-20 | 26, 60 | 2013-04-05 | 2013-04-05 | 1d | 29d | start no earlier than 2013-05-20 |  | Valid-FLO | 8h |
| 56 | 2.26 | STR2 - RUN - Broadcast the time |  | 1d | 2013-05-07 | 2013-05-07 | 27, 59 | 2013-04-09 | 2013-04-09 | 1d | 38d | start no earlier than 2013-05-07 |  | Valid-FLO | 8h |
| 57 | 2.27 | STR2 - RUN - Generate Sounds |  | 1d | 2013-05-10 | 2013-05-10 | 28, 60 | 2013-04-04 | 2013-04-04 | 1d | 35d | start no earlier than 2013-05-10 |  | Valid-FLO | 8h |
| 58 | 2.28 | STR2 - RUN - Administrate locomotive topology (HMI Part) |  | 1d | 2013-05-17 | 2013-05-17 | 29, 60 | 2013-04-15 | 2013-04-15 | 1d | 30d | start no earlier than 2013-05-17 |  | Valid-FLO | 8h |
| 59 | 3 | 0.1.1 | milestone, manual | 0d | 2013-03-25 | 2013-03-25 |  | 2013-03-25 | 2013-03-25 | 0d |  |  |  |  |  |
| 60 | 4 | 3.0.0 | milestone, manual | 0d | 2013-03-31 | 2013-03-31 |  | 2013-04-01 | 2013-04-01 | 0d |  |  |  |  |  |
| 61 | 5 | 3.1.0 | milestone, manual | 0d | 2013-04-20 | 2013-04-20 |  |  |  |  |  |  |  |  |  |
| 62 | 6 | STR 4 deadline | milestone, manual | 0d | 2013-06-30 | 2013-06-30 |  |  |  |  |  |  | 2013-06-30 |  |  |
| 63 | 7 | STR 4 VTD writing / update | manual | 1d? | 2013-03-04 | 2013-03-04 |  |  |  |  |  |  |  |  |  |
| 64 | 8 | STR 4 RUN tests | manual | 1d? | 2013-03-04 | 2013-03-04 |  |  |  |  |  |  |  |  |  |
